# PINGS

Schedule from MS Project, 2022-04-19 to 2023-01-09, costs in €.
HP

## Calendars

- Estándar: Mon-Fri 09:00-13:00, 15:00-19:00; Sat-Sun off.

## Resources

| Resource | Rate |
| --- | --- |
| Analista de sistemas | 50 |
| Diseñador Senior | 43.75 |
| Diseñador Junior 1 | 25 |
| Diseñador Junior 2 | 25 |
| Técnico de Sistemas | 37.5 |
| Equipo de desarrollo | 6.56 |
| Estación de trabajo | 1650 |
| Estación de pruebas | 3200 |
| Entorno de Desarrollo Integrado | 1100 |
| Jefe de Proyecto | 50 |

## Schedule

| ID | WBS | Task | Type | Duration | Start | Finish | Predecessors | Total slack | Free slack | Constraint | Resources | Work | Cost |
| --- | --- | --- | --- | --- | --- | --- | --- | --- | --- | --- | --- | --- | --- |
| 1 | 1 | **Auto GO!** |  | 189.28d | 2022-04-19 | 2023-01-09 |  | 0d |  |  | Equipo de desarrollo; Entorno de Desarrollo Integrado [300%]; Estación de pruebas; Estación de trabajo; Jefe de Proyecto [20%] | 4404.86h | 131,303.43 |
| 2 | 1.1 | **Incremento 1** |  | 62.75d | 2022-04-19 | 2022-07-14 |  | 0d |  |  |  | 639.45h | 24,400.83 |
| 3 | 1.1.1 | **Análisis** |  | 24.01d | 2022-04-19 | 2022-05-23 |  | 0d |  |  |  | 192.08h | 9,604 |
| 4 | 1.1.1.1 | Requisitos software (ERS) |  | 16.09d | 2022-04-19 | 2022-05-11 |  | 0d |  |  | Analista de sistemas | 128.72h | 6,436 |
| 5 | 1.1.1.2 | Elaborar maquetas |  | 7.92d | 2022-05-11 | 2022-05-23 | 4 | 0d |  |  | Analista de sistemas | 63.36h | 3,168 |
| 6 | 1.1.1.3 | Hito de revisión de análisis | milestone | 0d | 2022-05-23 | 2022-05-23 | 5 | 0d |  | as late as possible |  |  |  |
| 7 | 1.1.2 | **Diseño** |  | 8.42d | 2022-05-23 | 2022-06-02 | 3 | 0d |  |  |  | 134.09h | 4,876.83 |
| 8 | 1.1.2.1 | Diseño del SGU |  | 8.42d | 2022-05-23 | 2022-06-02 |  | 0d |  | start no earlier than 2022-05-23 | Analista de sistemas [50%]; Diseñador Junior 1 | 67.36h | 2,526 |
| 9 | 1.1.2.2 | Diseño del SPT |  | 4.55d | 2022-05-23 | 2022-05-27 |  | 10.81d | 0d |  | Analista de sistemas [50%]; Diseñador Senior; Diseñador Junior 2 | 66.73h | 2,350.83 |
| 10 | 1.1.2.3 | Hito de revisión de diseño del SGU | milestone | 0d | 2022-06-02 | 2022-06-02 |  | 30.75d |  | start no earlier than 2022-06-02 |  |  |  |
| 11 | 1.1.2.4 | Hito de revisión de diseño del SPT | milestone | 0d | 2022-05-27 | 2022-05-27 |  | 34.75d |  | start no earlier than 2022-05-27 |  |  |  |
| 12 | 1.1.3 | **Codificación** |  | 16.5d | 2022-05-27 | 2022-06-21 |  | 0d |  |  |  | 146.56h | 4,090.75 |
| 13 | 1.1.3.1 | Codificar el SGU |  | 12.63d | 2022-06-02 | 2022-06-21 | 8 | 0d |  |  | Diseñador Junior 1 | 101.04h | 2,526 |
| 14 | 1.1.3.2 | Codificar el SPT |  | 5.69d | 2022-05-27 | 2022-06-06 | 9 | 10.81d |  |  | Diseñador Senior; Diseñador Junior 2 | 45.52h | 1,564.75 |
| 15 | 1.1.4 | **Pruebas unitarias** |  | 5.69d | 2022-06-21 | 2022-06-28 | 12 | 0d |  |  |  | 70.72h | 2,004.25 |
| 16 | 1.1.4.1 | Pruebas unitarias del SPT |  | 5.69d | 2022-06-21 | 2022-06-28 |  | 0d |  |  | Diseñador Junior 1 | 45.52h | 1,138 |
| 17 | 1.1.4.2 | Pruebas unitarias del SGU |  | 3.15d | 2022-06-21 | 2022-06-24 |  | 2.54d |  |  | Diseñador Senior; Diseñador Junior 2 | 25.2h | 866.25 |
| 18 | 1.1.5 | **Pruebas de integración** |  | 6d | 2022-06-28 | 2022-07-06 | 15 | 0d |  |  |  | 48h | 1,725 |
| 19 | 1.1.5.1 | Pruebas de integración |  | 6d | 2022-06-28 | 2022-07-06 |  | 0d |  |  | Analista de sistemas; Diseñador Junior 1; Diseñador Junior 2 [50%]; Diseñador Senior [33.3%] | 48h | 1,725 |
| 20 | 1.1.5.2 | Hito de revisión de pruebas de integración | milestone | 0d | 2022-07-06 | 2022-07-06 | 19 | 0d |  | as late as possible |  |  |  |
| 21 | 1.1.6 | **Implantación** |  | 6d | 2022-07-06 | 2022-07-14 | 18 | 0d |  |  |  | 48h | 2,100 |
| 22 | 1.1.6.1 | Implantación técnica |  | 4.02d | 2022-07-06 | 2022-07-12 |  | 0d |  |  | Analista de sistemas; Técnico de Sistemas | 32.16h | 1,407 |
| 23 | 1.1.6.2 | Implantación de validación |  | 1.98d | 2022-07-12 | 2022-07-14 | 22 | 0d |  |  | Analista de sistemas; Técnico de Sistemas | 15.84h | 693 |
| 24 | 1.1.6.3 | Hito de revisión de implantación | milestone | 0d | 2022-07-14 | 2022-07-14 | 23 | 0d |  | as late as possible |  |  |  |

| ID | WBS | Task | Type | Duration | Start | Finish | Predecessors | Total slack | Free slack | Resources | Work | Cost |
| --- | --- | --- | --- | --- | --- | --- | --- | --- | --- | --- | --- | --- |
| 25 | 1.2 | **Incremento 2** |  | 57.87d | 2022-07-14 | 2022-10-04 | 2 | 0d |  |  | 952.52h | 36,043 |
| 26 | 1.2.1 | **Análisis** |  | 23.61d | 2022-07-14 | 2022-08-17 |  | 0d |  |  | 188.88h | 9,444 |
| 27 | 1.2.1.1 | Requisitos software (ERS) |  | 15.82d | 2022-07-14 | 2022-08-05 |  | 0d |  | Analista de sistemas | 126.56h | 6,328 |
| 28 | 1.2.1.2 | Elaborar maquetas |  | 7.79d | 2022-08-05 | 2022-08-17 | 27 | 0d |  | Analista de sistemas | 62.32h | 3,116 |
| 29 | 1.2.1.3 | Hito de revisión de análisis | milestone | 0d | 2022-08-17 | 2022-08-17 | 28 | 0d |  |  |  |  |
| 30 | 1.2.2 | **Diseño** |  | 6.34d | 2022-08-17 | 2022-08-25 | 26 | 0d |  |  | 188.84h | 6,823 |
| 31 | 1.2.2.1 | Diseño del SGR |  | 6.34d | 2022-08-17 | 2022-08-25 |  | 0d |  | Analista de sistemas [50%]; Diseñador Junior 1; Diseñador Senior | 126.8h | 4,755 |
| 32 | 1.2.2.2 | Diseño del SGV |  | 5.17d | 2022-08-17 | 2022-08-24 |  | 1.34d | 0d | Analista de sistemas [50%]; Diseñador Junior 2 | 62.04h | 2,068 |
| 33 | 1.2.2.3 | Hito de revisión de diseño del SGR | milestone | 0d | 2022-08-17 | 2022-08-17 |  | 34.26d |  |  |  |  |
| 34 | 1.2.2.4 | Hito de revisión de diseño del SGV | milestone | 0d | 2022-08-17 | 2022-08-17 |  | 34.26d |  |  |  |  |
| 35 | 1.2.3 | **Codificación** |  | 9.1d | 2022-08-24 | 2022-09-06 |  | 0d |  |  | 188.96h | 5,913.5 |
| 36 | 1.2.3.1 | Codificación del SGR |  | 7.93d | 2022-08-25 | 2022-09-06 | 31 | 0d |  | Diseñador Junior 1; Diseñador Senior | 126.88h | 4,361.5 |
| 37 | 1.2.3.2 | Codificación del SGV |  | 7.76d | 2022-08-24 | 2022-09-05 | 32 | 1.34d |  | Diseñador Junior 2 | 62.08h | 1,552 |
| 38 | 1.2.4 | **Pruebas unitarias** |  | 7.93d | 2022-09-06 | 2022-09-16 | 35 | 0d |  |  | 94.48h | 2,653 |
| 39 | 1.2.4.1 | Pruebas unitarias del SGR |  | 7.93d | 2022-09-06 | 2022-09-16 |  | 0d |  | Diseñador Junior 2 | 63.44h | 1,586 |
| 40 | 1.2.4.2 | Pruebas unitarias del SGV |  | 1.94d | 2022-09-06 | 2022-09-08 |  | 5.99d |  | Diseñador Junior 1; Diseñador Senior | 31.04h | 1,067 |
| 41 | 1.2.5 | **Pruebas de integración** |  | 6.15d | 2022-09-16 | 2022-09-26 | 38 | 0d |  |  | 196.8h | 7,072.5 |
| 42 | 1.2.5.1 | Pruebas de integración |  | 6.15d | 2022-09-16 | 2022-09-26 |  | 0d |  | Analista de sistemas; Diseñador Junior 1; Diseñador Junior 2; Diseñador Senior | 196.8h | 7,072.5 |
| 43 | 1.2.5.2 | Hito de revisión de pruebas de integración | milestone | 0d | 2022-09-16 | 2022-09-16 |  | 6.15d |  |  |  |  |
| 44 | 1.2.6 | **Implantación** |  | 5.91d | 2022-09-26 | 2022-10-04 | 41 | 0d |  |  | 94.56h | 4,137 |
| 45 | 1.2.6.1 | Implantación técnica |  | 3.96d | 2022-09-26 | 2022-09-30 |  | 0d |  | Analista de sistemas; Técnico de Sistemas | 63.36h | 2,772 |
| 46 | 1.2.6.2 | Implantación de validación |  | 1.95d | 2022-09-30 | 2022-10-04 | 45 | 0d |  | Analista de sistemas; Técnico de Sistemas | 31.2h | 1,365 |
| 47 | 1.2.6.3 | Hito de revisión de implantación | milestone | 0d | 2022-10-04 | 2022-10-04 | 46 | 0d |  |  |  |  |
| 48 | 1.3 | **Incremento 3** |  | 68.66d | 2022-10-04 | 2023-01-09 | 25 | 0d |  |  | 995.8h | 37,630 |
| 49 | 1.3.1 | **Análisis** |  | 26.65d | 2022-10-04 | 2022-11-10 |  | 0d |  |  | 213.2h | 10,660 |
| 50 | 1.3.1.1 | Requisitos software (ERS) |  | 17.86d | 2022-10-04 | 2022-10-28 |  | 0d |  | Analista de sistemas | 142.88h | 7,144 |
| 51 | 1.3.1.2 | Elaborar maquetas |  | 8.79d | 2022-10-28 | 2022-11-10 | 50 | 0d |  | Analista de sistemas | 70.32h | 3,516 |
| 52 | 1.3.1.3 | Hito de revisión de análisis | milestone | 0d | 2022-11-10 | 2022-11-10 | 51 | 0d |  |  |  |  |

| ID | WBS | Task | Type | Duration | Start | Finish | Predecessors | Total slack | Free slack | Resources | Work | Cost |
| --- | --- | --- | --- | --- | --- | --- | --- | --- | --- | --- | --- | --- |
| 53 | 1.3.2 | **Diseño** |  | 8.77d | 2022-11-10 | 2022-11-23 | 49 | 0d |  |  | 142.84h | 5,138 |
| 54 | 1.3.2.1 | Diseño del SGP |  | 8.77d | 2022-11-10 | 2022-11-23 |  | 0d |  | Analista de sistemas [50%]; Diseñador Junior 1 | 105.24h | 3,508 |
| 55 | 1.3.2.2 | Diseño del SGI |  | 5.4d | 2022-11-10 | 2022-11-17 |  | 9.78d | 0d | Analista de sistemas [50%]; Diseñador Junior 2; Diseñador Senior | 37.6h | 1,630 |
| 56 | 1.3.2.3 | Hito de revisión de diseño del SGP | milestone | 0d | 2022-11-10 | 2022-11-10 |  | 42.01d |  |  |  |  |
| 57 | 1.3.2.4 | Hito de revisión de diseño del SGI | milestone | 0d | 2022-11-10 | 2022-11-10 |  | 42.01d |  |  |  |  |
| 58 | 1.3.3 | **Codificación** |  | 16.53d | 2022-11-17 | 2022-12-12 |  | 0d |  |  | 213.28h | 6,344.5 |
| 59 | 1.3.3.1 | Codificación del SGP |  | 13.16d | 2022-11-23 | 2022-12-12 | 54 | 0d |  | Diseñador Junior 1 | 105.28h | 2,632 |
| 60 | 1.3.3.2 | Codificación del SGI |  | 6.75d | 2022-11-17 | 2022-11-28 | 55 | 9.78d |  | Diseñador Junior 2; Diseñador Senior | 108h | 3,712.5 |
| 61 | 1.3.4 | **Pruebas unitarias** |  | 6.75d | 2022-12-12 | 2022-12-20 | 58 | 0d |  |  | 106.64h | 3,159.5 |
| 62 | 1.3.4.1 | Pruebas unitarias del SGP |  | 3.29d | 2022-12-12 | 2022-12-15 |  | 3.46d |  | Diseñador Junior 2; Diseñador Senior | 52.64h | 1,809.5 |
| 63 | 1.3.4.2 | Pruebas unitarias del SGI |  | 6.75d | 2022-12-12 | 2022-12-20 |  | 0d |  | Diseñador Junior 1 | 54h | 1,350 |
| 64 | 1.3.5 | **Pruebas de integración** |  | 6.66d | 2022-12-20 | 2022-12-29 | 61 | 0d |  |  | 213.12h | 7,659 |
| 65 | 1.3.5.1 | Pruebas de integración |  | 6.66d | 2022-12-20 | 2022-12-29 |  | 0d |  | Analista de sistemas; Diseñador Junior 1; Diseñador Junior 2; Diseñador Senior | 213.12h | 7,659 |
| 66 | 1.3.5.2 | Hito de revisión de pruebas de integración | milestone | 0d | 2022-12-20 | 2022-12-20 |  | 6.66d |  |  |  |  |
| 67 | 1.3.6 | **Implantación** |  | 6.67d | 2022-12-29 | 2023-01-09 | 64 | 0d |  |  | 106.72h | 4,669 |
| 68 | 1.3.6.1 | Implantación técnica |  | 4.47d | 2022-12-29 | 2023-01-05 |  | 0d |  | Analista de sistemas; Técnico de Sistemas | 71.52h | 3,129 |
| 69 | 1.3.6.2 | Implantación de validación |  | 2.2d | 2023-01-05 | 2023-01-09 | 68 | 0d |  | Analista de sistemas; Técnico de Sistemas | 35.2h | 1,540 |
| 70 | 1.3.6.3 | Hito de revisión de implantación | milestone | 0d | 2023-01-09 | 2023-01-09 | 69 | 0d |  |  |  |  |
